# Gantt EPSA

Schedule from GanttProject, 2019-04-03 to 2020-06-24, baseline: 15_05_2019.
EPSA

## Calendars

- Project calendar: Mon-Fri working; Sat-Sun off.

## Resources

| Resource |
| --- |
| MJT |
| ARZ |
| TLS |
| PTN |
| CMI |
| TMN |
| PTS |
| ASE |
| IGH |
| EBA |
| GLD |
| CAD |
| MKI |
| MSO |
| PAX |
| ADT |
| VDA |
| PCK |
| CLS |
| RMN |
| BMA |

## Schedule

| ID | WBS | Task | Type | Duration | Start | Finish | Predecessors | Complete | Baseline start | Baseline finish | Baseline duration |
| --- | --- | --- | --- | --- | --- | --- | --- | --- | --- | --- | --- |
| 1 | 1 | **Tops** |  | 320d | 2019-04-03 | 2020-06-23 |  |  | 2019-04-03 | 2020-06-23 | 320d |
| 2 | 1.1 | Top Projet | milestone | 0d | 2019-04-03 | 2019-04-03 |  |  | 2019-04-03 | 2019-04-03 | 0d |
| 3 | 1.2 | RVP2 | milestone | 0d | 2019-04-03 | 2019-04-03 |  |  | 2019-04-03 | 2019-04-03 | 0d |
| 4 | 1.3 | Roll Out | milestone | 0d | 2019-04-10 | 2019-04-10 |  |  | 2019-04-10 | 2019-04-10 | 0d |
| 5 | 1.4 | Top Prédim | milestone | 0d | 2019-06-12 | 2019-06-12 |  |  | 2019-06-12 | 2019-06-12 | 0d |
| 6 | 1.5 | Top Appro | milestone | 0d | 2019-06-27 | 2019-06-27 |  |  | 2019-06-27 | 2019-06-27 | 0d |
| 7 | 1.6 | Top Saison | milestone | 0d | 2019-09-30 | 2019-09-30 |  |  | 2019-09-30 | 2019-09-30 | 0d |
| 8 | 1.7 | Top Maquette | milestone | 0d | 2019-05-01 | 2019-05-01 |  |  | 2019-05-01 | 2019-05-01 | 0d |
| 9 | 1.8 | Top Synthèse | milestone | 0d | 2019-10-02 | 2019-10-02 |  |  | 2019-10-02 | 2019-10-02 | 0d |
| 10 | 1.9 | Top Copeau 1 | milestone | 0d | 2019-11-06 | 2019-11-06 |  |  | 2019-11-06 | 2019-11-06 | 0d |
| 11 | 1.10 | Top Copeau 2 | milestone | 0d | 2019-11-20 | 2019-11-20 |  |  | 2019-11-20 | 2019-11-20 | 0d |
| 12 | 1.11 | Top Organe | milestone | 0d | 2020-02-05 | 2020-02-05 |  |  | 2020-02-05 | 2020-02-05 | 0d |
| 13 | 1.12 | Top Véhicule | milestone | 0d | 2020-02-19 | 2020-02-19 |  |  | 2020-02-19 | 2020-02-19 | 0d |
| 14 | 1.13 | Top Moteur | milestone | 0d | 2020-03-04 | 2020-03-04 |  |  | 2020-03-04 | 2020-03-04 | 0d |
| 15 | 1.14 | Top Qualif | milestone | 0d | 2020-03-17 | 2020-03-17 |  |  | 2020-03-17 | 2020-03-17 | 0d |
| 16 | 1.15 | Top Compet | milestone | 0d | 2020-06-24 | 2020-06-24 |  |  | 2020-06-24 | 2020-06-24 | 0d |
| 17 | 2 | **Livrables** |  | 23d | 2019-05-08 | 2019-06-07 |  | 17% | 2019-05-08 | 2019-06-04 | 20d |
| 18 | 2.1 | D2I |  | 5d | 2019-05-08 | 2019-05-14 |  | 100% | 2019-05-08 | 2019-05-14 | 5d |
| 19 | 2.2 | MSP |  | 5d | 2019-05-08 | 2019-05-14 |  | 50% | 2019-05-08 | 2019-05-14 | 5d |
| 20 | 2.3 | CdCF |  | 8d | 2019-05-15 | 2019-05-24 | 18, 19 |  | 2019-05-15 | 2019-05-21 | 5d |
| 21 | 2.4 | KPI |  | 5d | 2019-05-27 | 2019-05-31 | 20 |  | 2019-05-22 | 2019-05-28 | 5d |
| 22 | 2.5 | CCA |  | 5d | 2019-05-27 | 2019-05-31 | 20 |  | 2019-05-22 | 2019-05-28 | 5d |
| 23 | 2.6 | MIP-3D |  | 5d | 2019-06-03 | 2019-06-07 | 21, 22 |  | 2019-05-29 | 2019-06-04 | 5d |
| 24 | 2.7 | Rapport de PE |  | 10d | 2019-05-22 | 2019-06-04 |  |  |  |  |  |

| ID | WBS | Task | Duration | Start | Finish | Predecessors | Complete | Baseline start | Baseline finish | Baseline duration | Resources |
| --- | --- | --- | --- | --- | --- | --- | --- | --- | --- | --- | --- |
| 25 | 3 | **Frame** | 43d | 2019-05-08 | 2019-07-05 |  | 25% | 2019-05-08 | 2019-05-22 | 11d |  |
| 26 | 3.1 | Finir BOM | 4d | 2019-05-08 | 2019-05-13 |  | 100% | 2019-05-08 | 2019-05-13 | 4d | CMI |
| 27 | 3.2 | Recontacter Tachon | 7d | 2019-05-08 | 2019-05-16 |  | 100% | 2019-05-08 | 2019-05-16 | 7d | CMI |
| 28 | 3.3 | Continuer test chassis surfacique | 33d | 2019-05-22 | 2019-07-05 |  |  |  |  |  |  |
| 29 | 4 | **Aéro** | 30d | 2019-05-08 | 2019-06-18 |  | 19% |  |  |  |  |
| 30 | 4.1 | **Réunion Aéro** | 16d | 2019-05-08 | 2019-05-29 |  | 68% | 2019-05-08 | 2019-05-22 | 11d |  |
| 31 | 4.1.1 | Organiser réunion Aéro 1 | 6d | 2019-05-08 | 2019-05-15 |  | 100% | 2019-05-08 | 2019-05-15 | 6d | TMN |
| 32 | 4.1.2 | Réunion Aéro 1 | 1d | 2019-05-16 | 2019-05-16 | 31 |  | 2019-05-16 | 2019-05-16 | 1d |  |
| 33 | 4.1.3 | Préparation simulation | 3d | 2019-05-08 | 2019-05-10 |  | 100% | 2019-05-08 | 2019-05-10 | 3d | TMN |
| 34 | 4.1.4 | Simulation | 4d | 2019-05-13 | 2019-05-16 | 33 | 50% | 2019-05-13 | 2019-05-16 | 4d | TMN |
| 35 | 4.1.5 | Calcul indicateurs + Demander Simu Accel/Slid | 1d | 2019-05-17 | 2019-05-17 | 34 |  | 2019-05-17 | 2019-05-17 | 1d |  |
| 36 | 4.1.6 | Réunion 2 EPSAéro ou pas | 1d | 2019-05-29 | 2019-05-29 | 35, 60, 61, 79 |  | 2019-05-22 | 2019-05-22 | 1d |  |
| 37 | 4.2 | **Gain de points** | 4d | 2019-05-16 | 2019-05-21 |  | 11% |  |  |  |  |
| 38 | 4.2.1 | Downforce | 1d | 2019-05-16 | 2019-05-16 |  | 100% |  |  |  |  |
| 39 | 4.2.2 | Masse | 4d | 2019-05-16 | 2019-05-21 |  |  |  |  |  |  |
| 40 | 4.2.3 | Centre de gravité | 4d | 2019-05-16 | 2019-05-21 |  |  |  |  |  | PTS |
| 41 | 4.3 | **Budget** | 15d | 2019-05-08 | 2019-05-28 |  | 46% |  |  |  |  |
| 42 | 4.3.1 | Relancer Devis | 5d | 2019-05-08 | 2019-05-14 |  | 100% | 2019-05-08 | 2019-05-08 | 1d |  |
| 43 | 4.3.2 | Devis | 10d | 2019-05-15 | 2019-05-28 | 42 | 20% |  |  |  |  |
| 44 | 4.4 | **Temps** | 10d | 2019-05-16 | 2019-05-29 |  |  |  |  |  |  |
| 45 | 4.4.1 | H.Homme | 2d | 2019-05-16 | 2019-05-17 |  |  |  |  |  |  |
| 46 | 4.4.2 | Fraction | 2d | 2019-05-20 | 2019-05-21 | 45 |  |  |  |  |  |
| 47 | 4.4.3 | Recrutement | 10d | 2019-05-16 | 2019-05-29 |  |  |  |  |  | MJT; ARZ; TLS |
| 48 | 4.5 | **Fallback plan** | 13d | 2019-05-16 | 2019-06-03 |  |  |  |  |  |  |
| 49 | 4.5.1 | Plans listés | 8d | 2019-05-16 | 2019-05-27 |  |  |  |  |  | TLS |
| 50 | 4.5.2 | Plans datés | 1d | 2019-05-28 | 2019-05-28 | 49 |  |  |  |  | ARZ |
| 51 | 4.5.3 | Perte si annulation | 5d | 2019-05-28 | 2019-06-03 | 49 |  |  |  |  | TLS |

Notes:
- 33: TMN SkidPad / Agostino Accel
- 34: Il faut obtenir Cx et Cz
- 35: €/points / €/kg downforce
- 47: PAi/PAr

| ID | WBS | Task | Duration | Start | Finish | Predecessors | Complete | Baseline start | Baseline finish | Baseline duration | Resources |
| --- | --- | --- | --- | --- | --- | --- | --- | --- | --- | --- | --- |
| 52 | 4.6 | **Prototypage** | 15d | 2019-05-22 | 2019-06-11 |  |  |  |  |  |  |
| 53 | 4.6.1 | Réflexion | 5d | 2019-05-22 | 2019-05-28 |  |  |  |  |  | TMN |
| 54 | 4.6.2 | Nervure Bois | 10d | 2019-05-29 | 2019-06-11 | 53 |  |  |  |  | TMN |
| 55 | 4.7 | **Design du kit** | 20d | 2019-05-22 | 2019-06-18 |  |  |  |  |  |  |
| 56 | 4.7.1 | Simplifier l'aéro | 20d | 2019-05-22 | 2019-06-18 |  |  |  |  |  |  |
| 57 | 5 | **LAS** | 40d | 2019-05-08 | 2019-07-02 |  | 41% | 2019-05-08 | 2019-05-28 | 15d |  |
| 58 | 5.1 | **Pneu** | 20d | 2019-05-08 | 2019-06-04 |  | 36% | 2019-05-08 | 2019-05-28 | 15d |  |
| 59 | 5.1.1 | Modèle de pneu | 10d | 2019-05-08 | 2019-05-21 |  | 100% | 2019-05-08 | 2019-05-21 | 10d | MSO |
| 60 | 5.1.2 | Modèle accélération latérale | 5d | 2019-05-08 | 2019-05-14 |  | 100% | 2019-05-08 | 2019-05-14 | 5d | MKI |
| 61 | 5.1.3 | Modèle freinage | 10d | 2019-05-15 | 2019-05-28 |  | 20% | 2019-05-08 | 2019-05-14 | 5d | ADT |
| 62 | 5.1.4 | Modèle Circuit | 7d | 2019-05-22 | 2019-05-30 | 60, 78 |  |  |  |  |  |
| 63 | 5.1.5 | Analyse Point Performance | 5d | 2019-05-29 | 2019-06-04 | 61 |  |  |  |  |  |
| 64 | 5.1.6 | Analyse résultat | 5d | 2019-05-29 | 2019-06-04 | 61 |  |  |  |  |  |
| 65 | 5.1.7 | Matrice de décision | 5d | 2019-05-29 | 2019-06-04 | 59, 60, 61 |  | 2019-05-22 | 2019-05-28 | 5d | MKI; MSO |
| 66 | 5.2 | **Suspension** | 5d | 2019-05-27 | 2019-05-31 |  |  | 2019-05-22 | 2019-05-28 | 5d |  |
| 67 | 5.2.1 | Choix architecture | 5d | 2019-05-27 | 2019-05-31 | 20 |  | 2019-05-22 | 2019-05-28 | 5d | PAX |
| 68 | 5.3 | **BAR** | 5d | 2019-05-27 | 2019-05-31 |  |  | 2019-05-22 | 2019-05-28 | 5d |  |
| 69 | 5.3.1 | Choix architecture | 5d | 2019-05-27 | 2019-05-31 | 20 |  | 2019-05-22 | 2019-05-28 | 5d | VDA |
| 70 | 5.4 | **Roue équipée** | 5d | 2019-05-22 | 2019-05-28 |  |  |  |  |  |  |
| 71 | 5.4.1 | CdCF | 5d | 2019-05-22 | 2019-05-28 |  |  |  |  |  |  |
| 72 | 5.5 | **Optimum Kinematics** | 40d | 2019-05-08 | 2019-07-02 |  | 59% | 2019-05-08 | 2019-05-28 | 15d |  |
| 73 | 5.5.1 | Prise en main | 30d | 2019-05-08 | 2019-06-18 |  | 60% | 2019-05-08 | 2019-05-21 | 10d | PCK |
| 74 | 5.5.2 | Faire le CR | 40d | 2019-05-08 | 2019-07-02 |  | 59% | 2019-05-08 | 2019-05-28 | 15d | PCK |
| 75 | 6 | **Motorisation** | 25d | 2019-05-06 | 2019-06-07 |  | 25% | 2019-05-06 | 2019-05-24 | 15d |  |
| 76 | 6.1 | **Modèle** | 13d | 2019-05-08 | 2019-05-24 |  | 43% | 2019-05-08 | 2019-05-21 | 10d |  |
| 77 | 6.1.1 | Optimum Lap | 10d | 2019-05-08 | 2019-05-21 |  |  | 2019-05-08 | 2019-05-21 | 10d | IGH |
| 78 | 6.1.2 | Modèle Accel | 10d | 2019-05-08 | 2019-05-21 |  | 100% | 2019-05-08 | 2019-05-14 | 5d | ASE |
| 79 | 6.1.3 | Simulation avec aéro | 3d | 2019-05-22 | 2019-05-24 | 34, 78 |  | 2019-05-17 | 2019-05-21 | 3d |  |

Notes:
- 59: Code / Donnée TTC
- 61: Choix aéro
- 62: Autocross puis endura / nce
- 77: Circuit FS ATA
- 78: Simuler le temps à l'accel avec la trainée simulée en configuration lisse

| ID | WBS | Task | Duration | Start | Finish | Predecessors | Complete | Baseline start | Baseline finish | Baseline duration | Resources |
| --- | --- | --- | --- | --- | --- | --- | --- | --- | --- | --- | --- |
| 80 | 6.2 | **Refroidissement** | 5d | 2019-05-27 | 2019-05-31 |  |  | 2019-05-20 | 2019-05-24 | 5d |  |
| 81 | 6.2.1 | Architecture à définir | 5d | 2019-05-27 | 2019-05-31 |  |  | 2019-05-20 | 2019-05-24 | 5d | ASE |
| 82 | 6.3 | **Admission** | 10d | 2019-05-27 | 2019-06-07 |  |  | 2019-05-08 | 2019-05-21 | 10d |  |
| 83 | 6.3.1 | Architecture à définir | 10d | 2019-05-27 | 2019-06-07 |  |  | 2019-05-08 | 2019-05-21 | 10d | TLS |
| 84 | 6.4 | **Echappement** | 10d | 2019-05-27 | 2019-06-07 |  |  |  |  |  |  |
| 85 | 6.4.1 | Architecture à définir | 10d | 2019-05-27 | 2019-06-07 |  |  |  |  |  | TLS |
| 86 | 6.5 | **Circuit d'essence** | 20d | 2019-05-06 | 2019-05-31 |  | 47% | 2019-05-06 | 2019-05-24 | 15d |  |
| 87 | 6.5.1 | Reflexion sur l'éthanol | 20d | 2019-05-06 | 2019-05-31 |  | 50% | 2019-05-06 | 2019-05-24 | 15d | CAD |
| 88 | 6.5.2 | Sytème de remplissage plus léger | 18d | 2019-05-08 | 2019-05-31 |  | 45% | 2019-05-08 | 2019-05-21 | 10d | EBA; GLD |
| 89 | 7 | **SEISM** | 33d | 2019-05-22 | 2019-07-05 |  |  | 2019-05-10 | 2019-05-16 | 5d |  |
| 90 | 7.1 | **Démarchage** | 7d | 2019-05-22 | 2019-05-30 |  |  | 2019-05-10 | 2019-05-16 | 5d |  |
| 91 | 7.1.1 | Caméra de casque | 7d | 2019-05-22 | 2019-05-30 |  |  | 2019-05-10 | 2019-05-16 | 5d | CLS |
| 92 | 7.2 | **Faisceau** | 23d | 2019-05-22 | 2019-06-21 |  |  |  |  |  |  |
| 93 | 7.2.1 | CdCF | 3d | 2019-05-22 | 2019-05-24 |  |  |  |  |  |  |
| 94 | 7.2.2 | Architecture Faisceau | 5d | 2019-05-27 | 2019-05-31 | 93 |  |  |  |  | CLS |
| 95 | 7.2.3 | Faisceau HV | 5d | 2019-06-03 | 2019-06-07 | 94 |  |  |  |  | CLS |
| 96 | 7.2.4 | Batterie | 10d | 2019-06-10 | 2019-06-21 | 95 |  |  |  |  | CLS |
| 97 | 7.2.5 | Faisceau LV | 10d | 2019-06-03 | 2019-06-14 | 94 |  |  |  |  | CLS |
| 98 | 7.3 | **Tableau de bord** | 13d | 2019-05-22 | 2019-06-07 |  |  |  |  |  |  |
| 99 | 7.3.1 | CdCF | 3d | 2019-05-22 | 2019-05-24 |  |  |  |  |  |  |
| 100 | 7.3.2 | Architecture | 10d | 2019-05-27 | 2019-06-07 | 99 |  |  |  |  | RMN |
| 101 | 7.4 | **Passage de rapport** | 33d | 2019-05-22 | 2019-07-05 |  |  |  |  |  |  |
| 102 | 7.4.1 | CdCF | 3d | 2019-05-22 | 2019-05-24 |  |  |  |  |  |  |
| 103 | 7.4.2 | Choix palettes | 10d | 2019-05-27 | 2019-06-07 | 102 |  |  |  |  | RMN |
| 104 | 7.4.3 | Conception palettes | 10d | 2019-06-10 | 2019-06-21 | 103 |  |  |  |  | RMN |
| 105 | 7.4.4 | CdCF | 3d | 2019-05-22 | 2019-05-24 |  |  |  |  |  |  |
| 106 | 7.4.5 | Architecture | 10d | 2019-05-27 | 2019-06-07 | 105 |  |  |  |  | BMA |
| 107 | 7.4.6 | Commande de boîte | 20d | 2019-06-10 | 2019-07-05 | 106 |  |  |  |  | BMA |

Notes:
- 81: A définir en fonction du choix aéro
- 83: faire attention à l'aéro
- 85: faire attention à l'aéro
- 100: TdB/Volant équipé
- 106: TdB/Volant équipé

| ID | WBS | Task | Duration | Start | Finish | Predecessors | Resources |
| --- | --- | --- | --- | --- | --- | --- | --- |
| 108 | 7.5 | **Télémétrie** | 23d | 2019-05-22 | 2019-06-21 |  |  |
| 109 | 7.5.1 | CdCF | 3d | 2019-05-22 | 2019-05-24 |  |  |
| 110 | 7.5.2 | Architecture | 10d | 2019-05-27 | 2019-06-07 | 109 | CLS |
| 111 | 7.5.3 | Choix capteurs | 10d | 2019-06-10 | 2019-06-21 | 110 | CLS |
