# Gantt EPSA

Schedule from GanttProject, 2019-04-03 to 2020-06-24, baseline: 15_05_2019.
EPSA

## Calendars

- Project calendar: Mon-Fri working; Sat-Sun off.

## Resources

| Resource |
| --- |
| MJT |
| ARZ |
| TLS |
| PTN |
| CMI |
| TMN |
| PTS |
| ASE |
| IGH |
| EBA |
| GLD |
| CAD |
| MKI |
| MSO |
| PAX |
| ADT |
| VDA |
| PCK |
| CLS |
| RMN |
| BMA |

## Schedule

| ID | WBS | Task | Type | Duration | Start | Finish | Predecessors | Complete | Baseline start | Baseline finish | Baseline duration |
| --- | --- | --- | --- | --- | --- | --- | --- | --- | --- | --- | --- |
| 1 | 1 | **Tops** |  | 320d | 2019-04-03 | 2020-06-23 |  |  | 2019-04-03 | 2020-06-23 | 320d |
| 2 | 1.1 | Top Projet | milestone | 0d | 2019-04-03 | 2019-04-03 |  |  | 2019-04-03 | 2019-04-03 | 0d |
| 3 | 1.2 | RVP2 | milestone | 0d | 2019-04-03 | 2019-04-03 |  |  | 2019-04-03 | 2019-04-03 | 0d |
| 4 | 1.3 | Roll Out | milestone | 0d | 2019-04-10 | 2019-04-10 |  |  | 2019-04-10 | 2019-04-10 | 0d |
| 5 | 1.4 | Top Prédim | milestone | 0d | 2019-06-12 | 2019-06-12 |  |  | 2019-06-12 | 2019-06-12 | 0d |
| 6 | 1.5 | Top Appro | milestone | 0d | 2019-06-27 | 2019-06-27 |  |  | 2019-06-27 | 2019-06-27 | 0d |
| 7 | 1.6 | Top Saison | milestone | 0d | 2019-09-30 | 2019-09-30 |  |  | 2019-09-30 | 2019-09-30 | 0d |
| 8 | 1.7 | Top Maquette | milestone | 0d | 2019-05-01 | 2019-05-01 |  |  | 2019-05-01 | 2019-05-01 | 0d |
| 9 | 1.8 | Top Synthèse | milestone | 0d | 2019-10-02 | 2019-10-02 |  |  | 2019-10-02 | 2019-10-02 | 0d |
| 10 | 1.9 | Top Copeau 1 | milestone | 0d | 2019-11-06 | 2019-11-06 |  |  | 2019-11-06 | 2019-11-06 | 0d |
| 11 | 1.10 | Top Copeau 2 | milestone | 0d | 2019-11-20 | 2019-11-20 |  |  | 2019-11-20 | 2019-11-20 | 0d |
| 12 | 1.11 | Top Organe | milestone | 0d | 2020-02-05 | 2020-02-05 |  |  | 2020-02-05 | 2020-02-05 | 0d |
| 13 | 1.12 | Top Véhicule | milestone | 0d | 2020-02-19 | 2020-02-19 |  |  | 2020-02-19 | 2020-02-19 | 0d |
| 14 | 1.13 | Top Moteur | milestone | 0d | 2020-03-04 | 2020-03-04 |  |  | 2020-03-04 | 2020-03-04 | 0d |
| 15 | 1.14 | Top Qualif | milestone | 0d | 2020-03-17 | 2020-03-17 |  |  | 2020-03-17 | 2020-03-17 | 0d |
| 16 | 1.15 | Top Compet | milestone | 0d | 2020-06-24 | 2020-06-24 |  |  | 2020-06-24 | 2020-06-24 | 0d |
| 17 | 2 | **Livrables** |  | 23d | 2019-05-08 | 2019-06-07 |  | 17% | 2019-05-08 | 2019-06-04 | 20d |
| 18 | 2.1 | D2I |  | 5d | 2019-05-08 | 2019-05-14 |  | 100% | 2019-05-08 | 2019-05-14 | 5d |
| 19 | 2.2 | MSP |  | 5d | 2019-05-08 | 2019-05-14 |  | 50% | 2019-05-08 | 2019-05-14 | 5d |
| 20 | 2.3 | CdCF |  | 8d | 2019-05-15 | 2019-05-24 | 18, 19 |  | 2019-05-15 | 2019-05-21 | 5d |
| 21 | 2.4 | KPI |  | 5d | 2019-05-27 | 2019-05-31 | 20 |  | 2019-05-22 | 2019-05-28 | 5d |
| 22 | 2.5 | CCA |  | 5d | 2019-05-27 | 2019-05-31 | 20 |  | 2019-05-22 | 2019-05-28 | 5d |
| 23 | 2.6 | MIP-3D |  | 5d | 2019-06-03 | 2019-06-07 | 21, 22 |  | 2019-05-29 | 2019-06-04 | 5d |
| 24 | 2.7 | Rapport de PE |  | 10d | 2019-05-22 | 2019-06-04 |  |  |  |  |  |

| ID | WBS | Task | Duration | Start | Finish | Predecessors | Complete | Baseline start | Baseline finish | Baseline duration | Resources |
| --- | --- | --- | --- | --- | --- | --- | --- | --- | --- | --- | --- |
| 25 | 3 | **Frame** | 43d | 2019-05-08 | 2019-07-05 |  | 26% | 2019-05-08 | 2019-05-22 | 11d |  |
| 26 | 3.1 | Finir BOM | 4d | 2019-05-08 | 2019-05-13 |  | 100% | 2019-05-08 | 2019-05-13 | 4d | CMI |
| 27 | 3.2 | Recontacter Tachon | 7d | 2019-05-08 | 2019-05-16 |  | 100% | 2019-05-08 | 2019-05-16 | 7d | CMI |
| 28 | 3.3 | Continuer test chassis surfacique | 33d | 2019-05-22 | 2019-07-05 |  | 20% |  |  |  |  |
| 29 | 3.4 | Cdcf des sous systèmes | 6d | 2019-05-22 | 2019-05-29 |  | 20% |  |  |  |  |
| 30 | 3.5 | KPI et CCA | 6d | 2019-05-30 | 2019-06-06 | 29 |  |  |  |  |  |
| 31 | 3.6 | MIP 3D Frame | 15d | 2019-06-07 | 2019-06-27 | 30 |  |  |  |  |  |
| 32 | 4 | **Aéro** | 30d | 2019-05-08 | 2019-06-18 |  | 32% |  |  |  |  |
| 33 | 4.1 | **Réunion Aéro** | 16d | 2019-05-08 | 2019-05-29 |  | 75% | 2019-05-08 | 2019-05-22 | 11d |  |
| 34 | 4.1.1 | Organiser réunion Aéro 1 | 6d | 2019-05-08 | 2019-05-15 |  | 100% | 2019-05-08 | 2019-05-15 | 6d | TMN |
| 35 | 4.1.2 | Réunion Aéro 1 | 1d | 2019-05-16 | 2019-05-16 | 34 | 100% | 2019-05-16 | 2019-05-16 | 1d |  |
| 36 | 4.1.3 | Préparation simulation | 3d | 2019-05-08 | 2019-05-10 |  | 100% | 2019-05-08 | 2019-05-10 | 3d | TMN |
| 37 | 4.1.4 | Simulation | 4d | 2019-05-13 | 2019-05-16 | 36 | 50% | 2019-05-13 | 2019-05-16 | 4d | TMN |
| 38 | 4.1.5 | Calcul indicateurs + Demander Simu Accel/Slid | 1d | 2019-05-17 | 2019-05-17 | 37 |  | 2019-05-17 | 2019-05-17 | 1d |  |
| 39 | 4.1.6 | Réunion 2 EPSAéro ou pas | 1d | 2019-05-29 | 2019-05-29 | 38, 64, 65, 85 |  | 2019-05-22 | 2019-05-22 | 1d |  |
| 40 | 4.2 | **Gain de points** | 17d | 2019-05-16 | 2019-06-07 |  | 3% |  |  |  |  |
| 41 | 4.2.1 | Downforce | 1d | 2019-05-16 | 2019-05-16 |  | 100% |  |  |  |  |
| 42 | 4.2.2 | Masse | 17d | 2019-05-16 | 2019-06-07 |  |  |  |  |  |  |
| 43 | 4.2.3 | Centre de gravité | 12d | 2019-05-16 | 2019-05-31 |  |  |  |  |  | PTS |
| 44 | 4.3 | **Budget** | 23d | 2019-05-08 | 2019-06-07 |  | 37% |  |  |  |  |
| 45 | 4.3.1 | Relancer Devis | 5d | 2019-05-08 | 2019-05-14 |  | 100% | 2019-05-08 | 2019-05-08 | 1d |  |
| 46 | 4.3.2 | Devis | 18d | 2019-05-15 | 2019-06-07 | 45 | 20% |  |  |  |  |
| 47 | 4.4 | **Temps** | 10d | 2019-05-16 | 2019-05-29 |  |  |  |  |  |  |
| 48 | 4.4.1 | H.Homme | 2d | 2019-05-16 | 2019-05-17 |  |  |  |  |  |  |
| 49 | 4.4.2 | Fraction | 2d | 2019-05-20 | 2019-05-21 | 48 |  |  |  |  |  |
| 50 | 4.4.3 | Recrutement | 10d | 2019-05-16 | 2019-05-29 |  |  |  |  |  | MJT; ARZ; TLS |

Notes:
- 36: TMN SkidPad / Agostino Accel
- 37: Il faut obtenir Cx et Cz
- 38: €/points / €/kg downforce
- 50: PAi/PAr

| ID | WBS | Task | Duration | Start | Finish | Predecessors | Complete | Baseline start | Baseline finish | Baseline duration | Resources |
| --- | --- | --- | --- | --- | --- | --- | --- | --- | --- | --- | --- |
| 51 | 4.5 | **Fallback plan** | 14d | 2019-05-16 | 2019-06-04 |  | 40% |  |  |  |  |
| 52 | 4.5.1 | Plans listés | 8d | 2019-05-16 | 2019-05-27 |  | 100% |  |  |  | TLS |
| 53 | 4.5.2 | Plans datés | 6d | 2019-05-28 | 2019-06-04 | 52 |  |  |  |  | ARZ |
| 54 | 4.5.3 | Perte si annulation | 6d | 2019-05-28 | 2019-06-04 | 52 |  |  |  |  | TLS |
| 55 | 4.6 | **Prototypage** | 15d | 2019-05-22 | 2019-06-11 |  | 75% |  |  |  |  |
| 56 | 4.6.1 | Réflexion | 5d | 2019-05-22 | 2019-05-28 |  | 100% |  |  |  | TMN |
| 57 | 4.6.2 | Nervure Bois | 10d | 2019-05-29 | 2019-06-11 | 56 | 100% |  |  |  | TMN |
| 58 | 4.6.3 | Toile cirée | 5d | 2019-05-29 | 2019-06-04 |  |  |  |  |  |  |
| 59 | 4.7 | **Design du kit** | 20d | 2019-05-22 | 2019-06-18 |  |  |  |  |  |  |
| 60 | 4.7.1 | Simplifier l'aéro | 20d | 2019-05-22 | 2019-06-18 |  |  |  |  |  |  |
| 61 | 5 | **LAS** | 40d | 2019-05-08 | 2019-07-02 |  | 44% | 2019-05-08 | 2019-05-28 | 15d |  |
| 62 | 5.1 | **Pneu** | 20d | 2019-05-08 | 2019-06-04 |  | 43% | 2019-05-08 | 2019-05-28 | 15d |  |
| 63 | 5.1.1 | Modèle de pneu | 10d | 2019-05-08 | 2019-05-21 |  | 100% | 2019-05-08 | 2019-05-21 | 10d | MSO |
| 64 | 5.1.2 | Modèle accélération latérale | 5d | 2019-05-08 | 2019-05-14 |  | 100% | 2019-05-08 | 2019-05-14 | 5d | MKI |
| 65 | 5.1.3 | Modèle freinage | 10d | 2019-05-15 | 2019-05-28 |  | 20% | 2019-05-08 | 2019-05-14 | 5d | ADT |
| 66 | 5.1.4 | Modèle Circuit | 7d | 2019-05-22 | 2019-05-30 | 64, 84 | 50% |  |  |  |  |
| 67 | 5.1.5 | Analyse Point Performance | 5d | 2019-05-29 | 2019-06-04 | 65 |  |  |  |  |  |
| 68 | 5.1.6 | Analyse résultat | 5d | 2019-05-29 | 2019-06-04 | 65 |  |  |  |  |  |
| 69 | 5.1.7 | Matrice de décision | 5d | 2019-05-29 | 2019-06-04 | 63, 64, 65 |  | 2019-05-22 | 2019-05-28 | 5d | MKI; MSO |
| 70 | 5.2 | **Suspension** | 5d | 2019-05-27 | 2019-05-31 |  |  | 2019-05-22 | 2019-05-28 | 5d |  |
| 71 | 5.2.1 | Choix architecture | 5d | 2019-05-27 | 2019-05-31 | 20 |  | 2019-05-22 | 2019-05-28 | 5d | PAX |
| 72 | 5.3 | **BAR** | 5d | 2019-05-27 | 2019-05-31 |  |  | 2019-05-22 | 2019-05-28 | 5d |  |
| 73 | 5.3.1 | Choix architecture | 5d | 2019-05-27 | 2019-05-31 | 20 |  | 2019-05-22 | 2019-05-28 | 5d | VDA |
| 74 | 5.4 | **Roue équipée** | 5d | 2019-05-22 | 2019-05-28 |  |  |  |  |  |  |
| 75 | 5.4.1 | CdCF | 5d | 2019-05-22 | 2019-05-28 |  |  |  |  |  |  |

Notes:
- 63: Code / Donnée TTC
- 65: Choix aéro
- 66: Autocross puis endura / nce

| ID | WBS | Task | Duration | Start | Finish | Predecessors | Complete | Baseline start | Baseline finish | Baseline duration | Resources |
| --- | --- | --- | --- | --- | --- | --- | --- | --- | --- | --- | --- |
| 76 | 5.5 | **Optimum Kinematics** | 40d | 2019-05-08 | 2019-07-02 |  | 74% | 2019-05-08 | 2019-05-28 | 15d |  |
| 77 | 5.5.1 | Prise en main | 30d | 2019-05-08 | 2019-06-18 |  | 75% | 2019-05-08 | 2019-05-21 | 10d | PCK |
| 78 | 5.5.2 | Faire le CR | 40d | 2019-05-08 | 2019-07-02 |  | 74% | 2019-05-08 | 2019-05-28 | 15d | PCK |
| 79 | 5.6 | **Point de LAS** | 10d | 2019-05-29 | 2019-06-11 |  |  |  |  |  |  |
| 80 | 5.6.1 | Prise en main de LOTUS | 10d | 2019-05-29 | 2019-06-11 |  |  |  |  |  |  |
| 81 | 6 | **Motorisation** | 25d | 2019-05-06 | 2019-06-07 |  | 37% | 2019-05-06 | 2019-05-24 | 15d |  |
| 82 | 6.1 | **Modèle** | 13d | 2019-05-08 | 2019-05-24 |  | 96% | 2019-05-08 | 2019-05-21 | 10d |  |
| 83 | 6.1.1 | Optimum Lap | 10d | 2019-05-08 | 2019-05-21 |  | 100% | 2019-05-08 | 2019-05-21 | 10d | IGH |
| 84 | 6.1.2 | Modèle Accel | 10d | 2019-05-08 | 2019-05-21 |  | 100% | 2019-05-08 | 2019-05-14 | 5d | ASE |
| 85 | 6.1.3 | Simulation avec aéro | 3d | 2019-05-22 | 2019-05-24 | 37, 84 | 70% | 2019-05-17 | 2019-05-21 | 3d |  |
| 86 | 6.2 | **Refroidissement** | 5d | 2019-05-27 | 2019-05-31 |  |  | 2019-05-20 | 2019-05-24 | 5d |  |
| 87 | 6.2.1 | Architecture à définir | 5d | 2019-05-27 | 2019-05-31 |  |  | 2019-05-20 | 2019-05-24 | 5d | ASE |
| 88 | 6.3 | **Admission** | 10d | 2019-05-27 | 2019-06-07 |  |  | 2019-05-08 | 2019-05-21 | 10d |  |
| 89 | 6.3.1 | Architecture à définir | 10d | 2019-05-27 | 2019-06-07 |  |  | 2019-05-08 | 2019-05-21 | 10d | TLS |
| 90 | 6.4 | **Echappement** | 10d | 2019-05-27 | 2019-06-07 |  |  |  |  |  |  |
| 91 | 6.4.1 | Architecture à définir | 10d | 2019-05-27 | 2019-06-07 |  |  |  |  |  | TLS |
| 92 | 6.5 | **Circuit d'essence** | 20d | 2019-05-06 | 2019-05-31 |  | 47% | 2019-05-06 | 2019-05-24 | 15d |  |
| 93 | 6.5.1 | Reflexion sur l'éthanol | 20d | 2019-05-06 | 2019-05-31 |  | 50% | 2019-05-06 | 2019-05-24 | 15d | CAD |
| 94 | 6.5.2 | Sytème de remplissage plus léger | 18d | 2019-05-08 | 2019-05-31 |  | 45% | 2019-05-08 | 2019-05-21 | 10d | EBA; GLD |
| 95 | 7 | **SEISM** | 33d | 2019-05-22 | 2019-07-05 |  | 15% | 2019-05-10 | 2019-05-16 | 5d |  |
| 96 | 7.1 | **Démarchage** | 7d | 2019-05-22 | 2019-05-30 |  |  | 2019-05-10 | 2019-05-16 | 5d |  |
| 97 | 7.1.1 | Caméra de casque | 7d | 2019-05-22 | 2019-05-30 |  |  | 2019-05-10 | 2019-05-16 | 5d | CLS |
| 98 | 7.2 | **Faisceau** | 23d | 2019-05-22 | 2019-06-21 |  | 9% |  |  |  |  |
| 99 | 7.2.1 | CdCF | 3d | 2019-05-22 | 2019-05-24 |  | 100% |  |  |  |  |
| 100 | 7.2.2 | Architecture Faisceau | 5d | 2019-05-27 | 2019-05-31 | 99 |  |  |  |  | CLS |
| 101 | 7.2.3 | Faisceau HV | 5d | 2019-06-03 | 2019-06-07 | 100 |  |  |  |  | CLS |
| 102 | 7.2.4 | Batterie | 10d | 2019-06-10 | 2019-06-21 | 101 |  |  |  |  | CLS |
| 103 | 7.2.5 | Faisceau LV | 10d | 2019-06-03 | 2019-06-14 | 100 |  |  |  |  | CLS |

Notes:
- 83: Circuit FS ATA
- 84: Simuler le temps à l'accel avec la trainée simulée en configuration lisse
- 87: A définir en fonction du choix aéro
- 89: faire attention à l'aéro
- 91: faire attention à l'aéro

| ID | WBS | Task | Duration | Start | Finish | Predecessors | Complete | Resources |
| --- | --- | --- | --- | --- | --- | --- | --- | --- |
| 104 | 7.3 | **Tableau de bord** | 13d | 2019-05-22 | 2019-06-07 |  |  |  |
| 105 | 7.3.1 | CdCF | 3d | 2019-05-22 | 2019-05-24 |  |  |  |
| 106 | 7.3.2 | Architecture | 10d | 2019-05-27 | 2019-06-07 | 105 |  | RMN |
| 107 | 7.4 | **Passage de rapport** | 33d | 2019-05-22 | 2019-07-05 |  | 30% |  |
| 108 | 7.4.1 | CdCF | 3d | 2019-05-22 | 2019-05-24 |  | 100% |  |
| 109 | 7.4.2 | Contacter TDN | 3d | 2019-05-27 | 2019-05-29 | 108 | 100% |  |
| 110 | 7.4.3 | Architecture | 10d | 2019-05-27 | 2019-06-07 | 108 | 50% | BMA |
| 111 | 7.4.4 | Commande de boîte | 20d | 2019-06-10 | 2019-07-05 | 110 |  | BMA |
| 112 | 7.5 | **Télémétrie** | 23d | 2019-05-22 | 2019-06-21 |  | 13% |  |
| 113 | 7.5.1 | CdCF | 3d | 2019-05-22 | 2019-05-24 |  | 100% |  |
| 114 | 7.5.2 | Architecture | 10d | 2019-05-27 | 2019-06-07 | 113 |  | CLS |
| 115 | 7.5.3 | Choix capteurs | 10d | 2019-06-10 | 2019-06-21 | 114 |  | CLS |

Notes:
- 106: TdB/Volant équipé
- 110: TdB/Volant équipé
